# Bloomington to Minonk 345 KV XTR Line

Schedule from Primavera P6, 2021-12-01 to 2022-07-20, data date 2021-12-08, baseline: Updated Baseline NLB, A marks actual dates.
The project is a multimillion-dollar project in Bloomington, IL to Minonk Il. It’s a large 20 mile 345 kv transmission line that is scheduled to start at the Oracle Innovations Lab Switchyard and it will have multiple spans crossing I-39. The project is in construction phase and has been running for 8 months. The owner has a number of sub-contractors they’re working with to get this done to turnover to operations by year end.

## Calendars

- Default Calendar: Mon-Fri 08:00-15:59; Sat-Sun off.

## Resources

| Resource | Group | Rate |
| --- | --- | --- |
| CIVIL | labor | 110 |
| FICON | labor | 120 |
| Lightening Industries | labor | 150 |

## Schedule

| ID | WBS | Activity | Type | Duration | Start | Finish | Predecessors | Complete | Planned start | Planned finish | Resources | Cost | Line Section 1 | join_id |
| --- | --- | --- | --- | --- | --- | --- | --- | --- | --- | --- | --- | --- | --- | --- |
|  | WBS1 | **Project Milestones** |  |  | 2021-12-01 | 2022-07-20 |  |  |  |  |  |  |  |  |
| MS-1000 |  | Project Start | milestone | 0d | 2021-12-01 A | 2021-12-01 A |  | 100% | 2021-12-06 | 2021-12-06 |  |  |  |  |
| MS-1010 |  | Foundations | level of effort | 102d | 2021-12-08 | 2022-04-28 | LS65-1150 FF, LS5-1150 FF, LS4-1150 FF, LS3-1150 FF, LS2-1090 FF, LS1-1060 SS, LS1-1080 SS, LS1-1090 FF |  |  |  |  |  |  |  |
| MS-1020 |  | Set Structures | level of effort | 132d | 2021-12-21 | 2022-06-22 | LS2-1050 FF, LS3-1050 FF, LS4-1050 FF, LS5-1050 FF, LS6-1050 FF, LS1-1050 SS, LS1-1040 SS |  |  |  |  |  |  |  |
| MS-1030 |  | Wire Pulling | level of effort | 142d | 2021-12-28 | 2022-07-13 | LS1-1020 FF, LS1-1010 FF, LS2-1030 SS, LS3-1030 SS, LS4-1030 FF, LS5-1030 FF, LS6-1030 FF, LS2-1020 FF, LS3-1020 FF, LS4-1020 FF, LS5-1020 FF, LS6-1020 FF, LS1-1030 SS, LS1-1010 SS |  |  |  |  |  |  |  |
| MS-1040 |  | Return to Ops | milestone | 0d | 2022-07-20 | 2022-07-20 | LS6-1010 FF, LS1-1010 FF |  |  |  |  |  |  |  |
|  | WBS11 | **Construction** |  |  | 2021-12-08 | 2022-07-20 |  |  |  |  |  |  |  |  |
|  | WBS41 | **Civil Contractor** |  |  | 2021-12-08 | 2022-04-28 |  |  |  |  |  |  |  |  |
|  | WBS61 | **Line Segment 1** |  |  | 2021-12-08 | 2021-12-20 |  |  |  |  |  |  |  |  |
| LS1-1060 |  | ROW and Easement Clearing |  | 2d | 2021-12-08 | 2021-12-09 |  |  |  |  | CIVIL; FICON |  | 1 | geo-polyline-1 |
| LS1-1070 |  | Stage Material |  | 2d | 2021-12-09 | 2021-12-10 | LS1-1060 FF+1d |  |  |  | CIVIL [120 h] | 13,200 | 1 | geo-polyline-1 |
| LS1-1080 |  | Drill Foundations |  | 3d | 2021-12-13 | 2021-12-15 | LS1-1070 |  |  |  | CIVIL [240 h] | 26,400 | 1 | geo-polyline-1 |
| LS1-1100 |  | Set Rebar Cage |  | 3d | 2021-12-13 | 2021-12-15 | LS1-1080 FF |  |  |  | CIVIL [240 h] | 26,400 | 1 | geo-polyline-1 |
| LS1-1090 |  | Pour Concrete |  | 5d | 2021-12-14 | 2021-12-20 | LS1-1100 FF+3d |  |  |  | CIVIL [480 h] | 52,800 | 1 | geo-polyline-1 |
|  | WBS61-1 | **Line Segment 2** |  |  | 2021-12-10 | 2022-02-03 |  |  |  |  |  |  |  |  |
| LS2-1060 |  | ROW and Easement Clearing |  | 15d | 2021-12-10 | 2021-12-30 | LS1-1060 |  |  |  | CIVIL [170 h]; FICON [200 h] | 42,700 |  | geo-polyline-2 |
| LS2-1070 |  | Stage Material Structures 16-30 |  | 5d | 2021-12-31 | 2022-01-06 | LS2-1060, LS1-1070 |  |  |  | CIVIL [120 h] | 13,200 |  | geo-polyline-2 |
| LS2-1080 |  | Drill Foundations |  | 5d | 2022-01-07 | 2022-01-13 | LS2-1070, LS1-1080 |  |  |  | CIVIL [240 h] | 26,400 |  | geo-polyline-2 |
| LS2-1100 |  | Set Rebar Cage |  | 5d | 2022-01-14 | 2022-01-20 | LS2-1080, LS1-1100 |  |  |  | CIVIL [240 h] | 26,400 |  | geo-polyline-2 |
| LS2-1090 |  | Pour Concrete |  | 10d | 2022-01-21 | 2022-02-03 | LS2-1100, LS1-1090 |  |  |  | CIVIL [480 h] | 52,800 |  | geo-polyline-2 |
|  | WBS61-1-1 | **Line Segment 3** |  |  | 2021-12-31 | 2022-02-24 |  |  |  |  |  |  |  |  |
| LS3-1120 |  | ROW and Easement Clearing |  | 15d | 2021-12-31 | 2022-01-20 | LS2-1060 |  |  |  | CIVIL [120 h]; FICON [120 h] | 27,600 |  | geo-polyline-3 |
| LS3-1110 |  | Stage Material |  | 5d | 2022-01-21 | 2022-01-27 | LS3-1120, LS2-1070 |  |  |  | CIVIL [120 h] | 13,200 |  | geo-polyline-3 |
| LS3-1130 |  | Drill Foundations |  | 5d | 2022-01-28 | 2022-02-03 | LS3-1110, LS2-1080 |  |  |  | CIVIL [240 h] | 26,400 |  | geo-polyline-3 |
| LS3-1140 |  | Set Rebar Cage |  | 5d | 2022-02-04 | 2022-02-10 | LS3-1130, LS2-1100 |  |  |  | CIVIL [240 h] | 26,400 |  | geo-polyline-3 |
| LS3-1150 |  | Pour Concrete |  | 10d | 2022-02-11 | 2022-02-24 | LS3-1140, LS2-1090 |  |  |  | CIVIL [480 h] | 52,800 |  | geo-polyline-3 |

| ID | WBS | Activity | Duration | Start | Finish | Predecessors | Resources | Cost | join_id | Line Section 1 | Line Segment |
| --- | --- | --- | --- | --- | --- | --- | --- | --- | --- | --- | --- |
|  | WBS61-1-1-1 | **Line Segment 4** |  | 2022-01-21 | 2022-03-17 |  |  |  |  |  |  |
| LS4-1120 |  | ROW and Easement Clearing | 15d | 2022-01-21 | 2022-02-10 | LS3-1120 | CIVIL [120 h]; FICON [120 h] | 27,600 | geo-polyline-4 |  |  |
| LS4-1110 |  | Stage Material | 5d | 2022-02-11 | 2022-02-17 | LS4-1120, LS3-1110 | CIVIL [120 h] | 13,200 | geo-polyline-4 |  |  |
| LS4-1130 |  | Drill Foundations | 5d | 2022-02-18 | 2022-02-24 | LS4-1110, LS3-1130 | CIVIL [240 h] | 26,400 | geo-polyline-4 |  |  |
| LS4-1140 |  | Set Rebar Cage | 5d | 2022-02-25 | 2022-03-03 | LS4-1130, LS3-1140 | CIVIL [240 h] | 26,400 | geo-polyline-4 |  |  |
| LS4-1150 |  | Pour Concrete | 10d | 2022-03-04 | 2022-03-17 | LS4-1140, LS3-1150 | CIVIL [480 h] | 52,800 | geo-polyline-4 |  |  |
|  | WBS61-1-1-1-1 | **Line Segment 5** |  | 2022-02-11 | 2022-04-07 |  |  |  |  |  |  |
| LS5-1120 |  | ROW and Easement Clearing | 15d | 2022-02-11 | 2022-03-03 | LS4-1120 | CIVIL [120 h]; FICON [120 h] | 27,600 | geo-polyline-5 | 5 |  |
| LS5-1110 |  | Stage Material | 5d | 2022-03-04 | 2022-03-10 | LS5-1120, LS4-1110 | CIVIL [120 h] | 13,200 | geo-polyline-5 | 5 |  |
| LS5-1130 |  | Drill Foundations | 5d | 2022-03-11 | 2022-03-17 | LS5-1110, LS4-1130 | CIVIL [240 h] | 26,400 | geo-polyline-5 | 5 |  |
| LS5-1140 |  | Set Rebar Cage | 5d | 2022-03-18 | 2022-03-24 | LS5-1130, LS4-1140 | CIVIL [240 h] | 26,400 | geo-polyline-5 | 5 |  |
| LS5-1150 |  | Pour Concrete | 10d | 2022-03-25 | 2022-04-07 | LS5-1140, LS4-1150 | CIVIL [480 h] | 52,800 | geo-polyline-5 | 5 |  |
|  | WBS61-1-1-1-1-1 | **Line Segment 6** |  | 2022-03-04 | 2022-04-28 |  |  |  |  |  |  |
| LS65-1120 |  | ROW and Easement Clearing | 15d | 2022-03-04 | 2022-03-24 | LS5-1120 | CIVIL [120 h]; FICON [120 h] | 27,600 | geo-polyline-6 |  | Line Segment 6 |
| LS65-1110 |  | Stage Material | 5d | 2022-03-25 | 2022-03-31 | LS65-1120, LS5-1110 | CIVIL [120 h] | 13,200 | geo-polyline-6 |  | Line Segment 6 |
| LS65-1130 |  | Drill Foundations | 5d | 2022-04-01 | 2022-04-07 | LS65-1110, LS5-1130 | CIVIL [240 h] | 26,400 | geo-polyline-6 |  | Line Segment 6 |
| LS65-1140 |  | Set Rebar Cage | 5d | 2022-04-08 | 2022-04-14 | LS5-1140, LS65-1130 | CIVIL [240 h] | 26,400 | geo-polyline-6 |  | Line Segment 6 |
| LS65-1150 |  | Pour Concrete | 10d | 2022-04-15 | 2022-04-28 | LS5-1150, LS65-1140 | CIVIL [480 h] | 52,800 | geo-polyline-6 |  | Line Segment 6 |
|  | WBS51 | **Electrical Contractor** |  | 2021-12-20 | 2022-07-20 |  |  |  |  |  |  |
|  | WBS71 | **Line Segment 1** |  | 2021-12-21 | 2022-01-17 |  |  |  |  |  |  |
| LS1-1040 |  | Stage Material | 1d | 2021-12-21 | 2021-12-21 | LS1-1090 FF+1d | Lightening Industries [200 h] | 30,000 | geo-polyline-1 | 1 |  |
| LS1-1050 |  | Set Structures | 5d | 2021-12-21 | 2021-12-27 | LS1-1040 SS | Lightening Industries [500 h] | 75,000 | geo-polyline-1 | 1 |  |
| LS1-1030 |  | Pull, Sag and Clip Conductor | 5d | 2021-12-28 | 2022-01-03 | LS1-1040, LS1-1050 | Lightening Industries [250 h] | 37,500 | geo-polyline-1 | 1 |  |
| LS1-1020 |  | Install OPGW | 5d | 2022-01-04 | 2022-01-10 | LS1-1030 | Lightening Industries [480 h] | 72,000 | geo-polyline-1 | 1 |  |
| LS1-1010 |  | Testing | 5d | 2022-01-11 | 2022-01-17 | LS1-1020 | Lightening Industries [40 h] | 6,000 | geo-polyline-1 | 1 |  |

| ID | WBS | Activity | Duration | Start | Finish | Predecessors | Resources | Cost | join_id | Line Section 1 |
| --- | --- | --- | --- | --- | --- | --- | --- | --- | --- | --- |
|  | WBS71-1 | **Line Segment 2** |  | 2021-12-20 | 2022-02-07 |  |  |  |  |  |
| LS2-1040 |  | Stage Material | 5d | 2021-12-20 | 2021-12-24 | LS1-1090 FF+4d | Lightening Industries [200 h] | 30,000 | geo-polyline-2 |  |
| LS2-1050 |  | Set Structures | 10d | 2021-12-28 | 2022-01-10 | LS2-1040, LS1-1050 | Lightening Industries [500 h] | 75,000 | geo-polyline-2 |  |
| LS2-1030 |  | Pull, Sag and Clip Conductor | 5d | 2022-01-11 | 2022-01-17 | LS2-1040, LS2-1050 | Lightening Industries [240 h] | 36,000 | geo-polyline-2 |  |
| LS2-1020 |  | Install OPGW | 10d | 2022-01-18 | 2022-01-31 | LS2-1030 | Lightening Industries [480 h] | 72,000 | geo-polyline-2 |  |
| LS2-1010 |  | Testing | 5d | 2022-02-01 | 2022-02-07 | LS2-1020 | Lightening Industries [40 h] | 6,000 | geo-polyline-2 |  |
|  | WBS71-2 | **Line Segment 3** |  | 2022-02-10 | 2022-03-30 |  |  |  |  |  |
| LS3-1040 |  | Stage Material | 5d | 2022-02-10 | 2022-02-16 | LS2-1090 FS+4d | Lightening Industries [200 h] | 30,000 | geo-polyline-3 |  |
| LS3-1050 |  | Set Structures | 10d | 2022-02-17 | 2022-03-02 | LS3-1040 | Lightening Industries [480 h] | 72,000 | geo-polyline-3 |  |
| LS3-1030 |  | Pull, Sag and Clip Conductor | 5d | 2022-03-03 | 2022-03-09 | LS3-1040, LS3-1050 | Lightening Industries [240 h] | 36,000 | geo-polyline-3 |  |
| LS3-1020 |  | Install OPGW | 10d | 2022-03-10 | 2022-03-23 | LS3-1030 | Lightening Industries [480 h] | 72,000 | geo-polyline-3 |  |
| LS3-1010 |  | Testing | 5d | 2022-03-24 | 2022-03-30 | LS3-1020 | Lightening Industries [40 h] | 6,000 | geo-polyline-3 |  |
|  | WBS71-2-1 | **Line Segment 4** |  | 2022-03-03 | 2022-04-20 |  |  |  |  |  |
| LS4-1040 |  | Stage Material | 5d | 2022-03-03 | 2022-03-09 | LS3-1150 FS+4d | Lightening Industries [200 h] | 30,000 | geo-polyline-4 |  |
| LS4-1050 |  | Set Structures | 10d | 2022-03-10 | 2022-03-23 | LS4-1040 | Lightening Industries [480 h] | 72,000 | geo-polyline-4 |  |
| LS4-1030 |  | Pull, Sag and Clip Conductor | 5d | 2022-03-24 | 2022-03-30 | LS4-1050, LS4-1040 | Lightening Industries [240 h] | 36,000 | geo-polyline-4 |  |
| LS4-1020 |  | Install OPGW | 10d | 2022-03-31 | 2022-04-13 | LS4-1030 | Lightening Industries [480 h] | 72,000 | geo-polyline-4 |  |
| LS4-1010 |  | Testing | 5d | 2022-04-14 | 2022-04-20 | LS4-1020 | Lightening Industries [40 h] | 6,000 | geo-polyline-4 |  |
|  | WBS71-2-1-1 | **Line Segment 5** |  | 2022-04-14 | 2022-06-01 |  |  |  |  |  |
| LS5-1040 |  | Stage Material | 5d | 2022-04-14 | 2022-04-20 | LS5-1150 FS+4d | Lightening Industries [200 h] | 30,000 | geo-polyline-5 | 5 |
| LS5-1050 |  | Set Structures | 10d | 2022-04-21 | 2022-05-04 | LS5-1040 | Lightening Industries [480 h] | 72,000 | geo-polyline-5 | 5 |
| LS5-1030 |  | Pull, Sag and Clip Conductor | 5d | 2022-05-05 | 2022-05-11 | LS5-1050, LS5-1040 | Lightening Industries [240 h] | 36,000 | geo-polyline-5 | 5 |
| LS5-1020 |  | Install OPGW | 10d | 2022-05-12 | 2022-05-25 | LS5-1030 | Lightening Industries [480 h] | 72,000 | geo-polyline-5 | 5 |
| LS5-1010 |  | Testing | 5d | 2022-05-26 | 2022-06-01 | LS5-1020 | Lightening Industries [40 h] | 6,000 | geo-polyline-5 | 5 |

| ID | WBS | Activity | Duration | Start | Finish | Predecessors | Resources | Cost | Line Segment | join_id |
| --- | --- | --- | --- | --- | --- | --- | --- | --- | --- | --- |
|  | WBS71-2-1-1-1 | **Line Segment 6** |  | 2022-06-02 | 2022-07-20 |  |  |  |  |  |
| LS6-1040 |  | Stage Material | 5d | 2022-06-02 | 2022-06-08 | LS65-1150 FS+4d, LS5-1010 | Lightening Industries [200 h] | 30,000 | Line Segment 6 | geo-polyline-6 |
| LS6-1050 |  | Set Structures | 10d | 2022-06-09 | 2022-06-22 | LS6-1040 | Lightening Industries [480 h] | 72,000 | Line Segment 6 | geo-polyline-6 |
| LS6-1030 |  | Pull, Sag and Clip Conductor | 5d | 2022-06-23 | 2022-06-29 | LS6-1050, LS6-1040 | Lightening Industries [240 h] | 36,000 | Line Segment 6 | geo-polyline-6 |
| LS6-1020 |  | Install OPGW | 10d | 2022-06-30 | 2022-07-13 | LS6-1030 | Lightening Industries [480 h] | 72,000 | Line Segment 6 | geo-polyline-6 |
| LS6-1010 |  | Testing | 5d | 2022-07-14 | 2022-07-20 | LS6-1020 | Lightening Industries [40 h] | 6,000 | Line Segment 6 | geo-polyline-6 |
